# Projet batiment R+4

How a schedule from ProjectLibre changed from version to version. A marks actual dates.

## Version 1 (saved 2025-12-14)

Note of the change: ODC, Page de garde

| ID | WBS | Task | Duration | Start | Finish | Predecessors |
| --- | --- | --- | --- | --- | --- | --- |
| 1 | 1 | **Préparation du chantier** | 10d | 2026-01-01 | 2026-01-14 |  |
| 2 |  | Installation de chantier | 5d | 2026-01-01 | 2026-01-07 |  |
| 3 |  | Clôture + signalisation | 3d | 2026-01-08 | 2026-01-12 | 2 |
| 4 |  | Implantation topographique | 2d | 2026-01-13 | 2026-01-14 | 3 |
| 6 | 2 | **Terrassement** | 12d | 2026-01-15 | 2026-01-30 | 1 |
| 7 |  | Décapage | 2d | 2026-01-15 | 2026-01-16 |  |
| 8 |  | Fouille en pleine masse | 5d | 2026-01-19 | 2026-01-23 | 7 |
| 9 |  | Fouilles en rigoles | 3d | 2026-01-26 | 2026-01-28 | 8 |
| 10 |  | Nivellement + compactage | 2d | 2026-01-29 | 2026-01-30 | 9 |
| 12 | 3 | **Fondation** | 12d | 2026-02-02 | 2026-02-17 | 6 |
| 13 |  | Coffrage fondations | 4d | 2026-02-02 | 2026-02-05 |  |
| 14 |  | Ferraillage fondations | 4d | 2026-02-02 | 2026-02-05 |  |
| 15 |  | Bétonnage fondations | 2d | 2026-02-06 | 2026-02-09 | 13, 14 |
| 16 |  | Cure béton | 6d | 2026-02-10 | 2026-02-17 | 15 |
| 18 | 4 | **Soubassement** | 19d | 2026-02-18 | 2026-03-16 | 12 |
| 19 |  | Élévation murs de soubassement | 5d | 2026-02-18 | 2026-02-24 |  |
| 20 |  | Remblaiement périphérique | 3d | 2026-02-25 | 2026-02-27 | 19 |
| 21 |  | Dallage RDC | 5d | 2026-03-02 | 2026-03-06 | 20 |
| 22 |  | Cure | 6d | 2026-03-09 | 2026-03-16 | 21 |
| 24 | 5 | **Structure du RDC** | 26d | 2026-03-17 | 2026-04-21 | 18 |
| 25 | 5.1 | **Poteaux** | 12d | 2026-03-17 | 2026-04-01 |  |
| 26 |  | Coffrage | 3d | 2026-03-17 | 2026-03-19 |  |
| 27 |  | Ferraillage | 3d | 2026-03-17 | 2026-03-19 |  |
| 28 |  | Bétonnage | 2d | 2026-03-20 | 2026-03-23 | 27, 26 |
| 29 |  | Décoffrage+cure | 7d | 2026-03-24 | 2026-04-01 | 28 |
| 31 | 5.2 | **Poutres+Dalle** | 14d | 2026-04-02 | 2026-04-21 | 25 |
| 32 |  | Coffrage | 5d | 2026-04-02 | 2026-04-08 |  |
| 33 |  | Ferraillage | 5d | 2026-04-02 | 2026-04-08 |  |
| 34 |  | Bétonnage | 2d | 2026-04-09 | 2026-04-10 | 33, 32 |
| 35 |  | Décoffrage+cure | 4d | 2026-04-13 | 2026-04-16 | 34 |
| 37 |  | Cage d’escalier | 3d | 2026-04-17 | 2026-04-21 | 35 |
| 39 | 6 | **Structure du 1ere etage** | 29d | 2026-04-22 | 2026-06-01 | 24 |
| 40 | 6.1 | **Poteaux** | 12d | 2026-04-22 | 2026-05-07 |  |
| 41 |  | Coffrage | 3d | 2026-04-22 | 2026-04-24 |  |
| 42 |  | Ferraillage | 3d | 2026-04-22 | 2026-04-24 |  |
| 43 |  | Bétonnage | 2d | 2026-04-27 | 2026-04-28 | 41, 42 |
| 44 |  | Décoffrage+cure | 7d | 2026-04-29 | 2026-05-07 | 43 |
| 46 | 6.2 | **Poutres+Dalle** | 14d | 2026-05-08 | 2026-05-27 | 40 |
| 47 |  | Coffrage | 5d | 2026-05-08 | 2026-05-14 |  |
| 48 |  | Ferraillage | 5d | 2026-05-08 | 2026-05-14 |  |
| 49 |  | Bétonnage | 2d | 2026-05-15 | 2026-05-18 | 47, 48 |
| 50 |  | Décoffrage+cure | 7d | 2026-05-19 | 2026-05-27 | 49 |
| 52 |  | Cage d’escalier | 3d | 2026-05-28 | 2026-06-01 | 50 |
| 55 | 7 | **Structure du 2eme etage** | 29d | 2026-06-02 | 2026-07-10 | 39 |
| 56 | 7.1 | **Poteaux** | 12d | 2026-06-02 | 2026-06-17 |  |
| 57 |  | Coffrage | 3d | 2026-06-02 | 2026-06-04 |  |
| 58 |  | Ferraillage | 3d | 2026-06-02 | 2026-06-04 |  |
| 59 |  | Bétonnage | 2d | 2026-06-05 | 2026-06-08 | 57, 58 |
| 60 |  | Décoffrage+cure | 7d | 2026-06-09 | 2026-06-17 | 59 |
| 62 | 7.2 | **Poutres+Dalle** | 14d | 2026-06-18 | 2026-07-07 | 56 |
| 63 |  | Coffrage | 5d | 2026-06-18 | 2026-06-24 |  |
| 64 |  | Ferraillage | 5d | 2026-06-18 | 2026-06-24 |  |
| 65 |  | Bétonnage | 2d | 2026-06-25 | 2026-06-26 | 64, 63 |
| 66 |  | Décoffrage+cure | 7d | 2026-06-29 | 2026-07-07 | 65 |
| 68 |  | Cage d’escalier | 3d | 2026-07-08 | 2026-07-10 | 66 |
| 71 | 8 | **Structure du 3eme etage** | 26d | 2026-07-13 | 2026-08-17 | 55 |
| 72 | 8.1 | **Poteaux** | 12d | 2026-07-13 | 2026-07-28 |  |
| 73 |  | Coffrage | 3d | 2026-07-13 | 2026-07-15 |  |
| 74 |  | Ferraillage | 3d | 2026-07-13 | 2026-07-15 |  |
| 75 |  | Bétonnage | 2d | 2026-07-16 | 2026-07-17 | 73, 74 |
| 76 |  | Décoffrage+cure | 7d | 2026-07-20 | 2026-07-28 | 75 |
| 78 | 8.2 | **Poutres+Dalle** | 11d | 2026-07-29 | 2026-08-12 | 72 |
| 79 |  | Coffrage | 5d | 2026-07-29 | 2026-08-04 |  |
| 80 |  | Ferraillage | 5d | 2026-07-29 | 2026-08-04 |  |
| 81 |  | Bétonnage | 2d | 2026-08-05 | 2026-08-06 | 80, 79 |
| 82 |  | Décoffrage+cure | 4d | 2026-08-07 | 2026-08-12 | 81 |
| 84 |  | Cage d’escalier | 3d | 2026-08-13 | 2026-08-17 | 82 |
| 87 | 9 | **Structure du 4eme etage** | 26d | 2026-08-18 | 2026-09-22 | 71 |
| 88 | 9.1 | **Poteaux** | 12d | 2026-08-18 | 2026-09-02 |  |
| 89 |  | Coffrage | 3d | 2026-08-18 | 2026-08-20 |  |

| ID | WBS | Task | Duration | Start | Finish | Predecessors |
| --- | --- | --- | --- | --- | --- | --- |
| 90 |  | Ferraillage | 3d | 2026-08-18 | 2026-08-20 |  |
| 91 |  | Bétonnage | 2d | 2026-08-21 | 2026-08-24 | 89, 90 |
| 92 |  | Décoffrage+cure | 7d | 2026-08-25 | 2026-09-02 | 91 |
| 94 | 9.2 | **Poutres+Dalle** | 11d | 2026-09-03 | 2026-09-17 | 88 |
| 95 |  | Coffrage | 5d | 2026-09-03 | 2026-09-09 |  |
| 96 |  | Ferraillage | 5d | 2026-09-03 | 2026-09-09 |  |
| 97 |  | Bétonnage | 2d | 2026-09-10 | 2026-09-11 | 96, 95 |
| 98 |  | Décoffrage+cure | 4d | 2026-09-14 | 2026-09-17 | 97 |
| 100 |  | Cage d’escalier | 3d | 2026-09-18 | 2026-09-22 | 98 |
| 103 | 10 | **Murs extérieurs** | 10.5d | 2026-09-23 | 2026-10-07 | 87 |
| 104 |  | Murs façade RDC | 7.5d | 2026-09-23 | 2026-10-02 |  |
| 105 |  | Murs façade étage 1 | 4.5d | 2026-09-23 | 2026-09-29 |  |
| 106 |  | Murs façade étage 2 | 3d | 2026-09-29 | 2026-10-02 | 105 |
| 107 |  | Murs façade étage 3 | 3d | 2026-10-02 | 2026-10-07 | 104 |
| 108 |  | Murs façade étage 4 | 3d | 2026-10-02 | 2026-10-07 | 106 |
| 110 | 11 | **Murs intérieurs** | 14d | 2026-10-07 | 2026-10-27 | 103 |
| 111 |  | Cloisons RDC | 4d | 2026-10-07 | 2026-10-13 |  |
| 112 |  | Cloisons par étage | 7.5d | 2026-10-07 | 2026-10-16 |  |
| 113 |  | Cloisons par étage | 5d | 2026-10-13 | 2026-10-20 | 111 |
| 114 |  | Cloisons par étage | 5d | 2026-10-19 | 2026-10-23 | 112 |
| 115 |  | Cloisons par étage | 5d | 2026-10-20 | 2026-10-27 | 113 |
| 117 | 12 | **Désinstallation** | 5d | 2026-10-27 | 2026-11-03 | 110 |
| 118 |  | Nettoyage chantier | 3d | 2026-10-27 | 2026-10-30 |  |
| 119 |  | Retrait installations | 2d | 2026-10-30 | 2026-11-03 | 118 |

## Version 2 (saved 2025-12-22)

Note of the change: suite psba et fin ODC

Last finish 2026-11-03 → 2026-09-02 (-62d).

Added:

| ID | Task | Duration | Start | Finish | Predecessors | Resources |
| --- | --- | --- | --- | --- | --- | --- |
| 35 | Escalier | 10d | 2026-04-16 | 2026-04-29 | 34 | Coffreurs [400%]; Ferrailleurs [400%]; Manœuvres [600%] |
| 49 | Escalier | 10d | 2026-06-12 | 2026-06-25 | 48 | Coffreurs [400%]; Ferrailleurs [400%]; Manœuvres [600%] |
| 64 | Escalier | 10d | 2026-08-10 | 2026-08-21 | 63 | Coffreurs [400%]; Ferrailleurs [400%]; Manœuvres [600%] |
| 67 | **Murs** | 5d | 2026-08-24 | 2026-08-28 | 52 |  |
| 69 | Murs étage 1 | 5d | 2026-08-24 | 2026-08-28 |  | Manœuvres [200%]; Maçons [200%] |
| 70 | Murs étage 2 | 5d | 2026-08-24 | 2026-08-28 |  | Manœuvres [200%]; Maçons [200%] |

Removed: 9 Fouilles en rigoles; 37 Cage d’escalier; 52 Cage d’escalier; 71 Structure du 3eme etage; 72 Poteaux; 74 Ferraillage; 75 Bétonnage; 76 Décoffrage+cure; 78 Poutres+Dalle; 79 Coffrage; 80 Ferraillage; 81 Bétonnage; 82 Décoffrage+cure; 84 Cage d’escalier; 87 Structure du 4eme etage; 88 Poteaux; 89 Coffrage; 90 Ferraillage; 91 Bétonnage; 92 Décoffrage+cure; 94 Poutres+Dalle; 95 Coffrage; 96 Ferraillage; 97 Bétonnage; 98 Décoffrage+cure; 100 Cage d’escalier; 103 Murs extérieurs; 104 Murs façade RDC; 105 Murs façade étage 1; 106 Murs façade étage 2; 107 Murs façade étage 3; 108 Murs façade étage 4; 110 Murs intérieurs; 111 Cloisons RDC; 112 Cloisons par étage; 113 Cloisons par étage; 114 Cloisons par étage; 115 Cloisons par étage; 117 Désinstallation

Changed:

| ID | Task | Start | Finish | Duration | Predecessors | Other |
| --- | --- | --- | --- | --- | --- | --- |
| 1 | **Préparation du chantier** |  | 2026-01-14 → 2026-01-09 (-5d) | 10d → 7d |  |  |
| 2 | Installation de chantier |  | 2026-01-07 → 2026-01-05 (-2d) | 5d → 3d |  | resources Chef de chantier; Manœuvres [200%] → Chef de chantier; Manœuvres [300%] |
| 3 | Clôture + signalisation | 2026-01-08 → 2026-01-06 (-2d) | 2026-01-12 → 2026-01-07 (-5d) | 3d → 2d |  | resources Manœuvres [300%] → Chef de chantier; Manœuvres [300%] |
| 4 | Implantation topographique | 2026-01-13 → 2026-01-08 (-5d) | 2026-01-14 → 2026-01-09 (-5d) |  |  |  |
| 6 | **Terrassement** | 2026-01-15 → 2026-01-12 (-3d) | 2026-01-30 → 2026-01-19 (-11d) | 12d → 6d |  |  |
| 7 | Décapage | 2026-01-15 → 2026-01-12 (-3d) | 2026-01-16 → 2026-01-12 (-4d) | 2d → 1d |  | resources Manœuvres [200%] → Chef de chantier; Manœuvres [200%]; Conducteur |
| 8 | Fouilles | 2026-01-19 → 2026-01-13 (-6d) | 2026-01-23 → 2026-01-15 (-8d) | 5d → 3d |  | was named Fouille en pleine masse; resources Conducteur; Pelle mécanique; Manœuvres [200%] → Chef de chantier; Manœuvres [200%]; Conducteur [200%]; Camion |
| 9 | Nivellement + compactage | 2026-01-29 → 2026-01-16 (-13d) | 2026-01-30 → 2026-01-19 (-11d) |  | Fouilles en rigoles → 8 | resources Manœuvres [200%]; Rouleau compresseur → Chef de chantier; Manœuvres [200%] |
| 11 | **Fondation** | 2026-02-02 → 2026-01-20 (-13d) | 2026-02-17 → 2026-02-05 (-12d) | 12d → 13d |  | resources Grutier; Grue → none |
| 12 | Coffrage fondations | 2026-02-02 → 2026-01-20 (-13d) | 2026-02-05 → 2026-01-21 (-15d) | 4d → 2d |  | resources Coffreurs [400%] → Coffreurs [400%]; Manœuvres [400%] |
| 13 | Ferraillage fondations | 2026-02-02 → 2026-01-20 (-13d) | 2026-02-05 → 2026-01-21 (-15d) | 4d → 2d |  | resources Ferrailleurs [400%] → Ferrailleurs [400%]; Manœuvres [200%] |
| 14 | Bétonnage fondations | 2026-02-06 → 2026-01-22 (-15d) | 2026-02-09 → 2026-01-22 (-18d) | 2d → 1d |  | resources Grutier; Maçons [400%] → Maçons [400%]; Chef de chantier; Manœuvres [500%] |
| 15 | Cure béton | 2026-02-10 → 2026-01-23 (-18d) | 2026-02-17 → 2026-02-05 (-12d) | 6d → 10d |  | resources none → Coffreurs [400%]; Manœuvres [400%] |
| 17 | **Soubassement** | 2026-02-18 → 2026-02-06 (-12d) | 2026-03-16 → 2026-03-03 (-13d) | 19d → 18d |  |  |
| 18 | Élévation murs de soubassement | 2026-02-18 → 2026-02-06 (-12d) | 2026-02-24 → 2026-02-09 (-15d) | 5d → 2d |  | resources Maçons [400%] → none |
| 19 | Remblaiement périphérique | 2026-02-25 → 2026-02-10 (-15d) | 2026-02-27 → 2026-02-11 (-16d) | 3d → 2d |  | resources Manœuvres → none |
| 20 | Dallage RDC | 2026-03-02 → 2026-02-12 (-18d) | 2026-03-06 → 2026-02-17 (-17d) | 5d → 4d |  | resources Coffreurs [400%] → Chef de chantier; Maçons [200%]; Coffreurs [400%]; Ferrailleurs [400%]; Manœuvres [600%] |
| 21 | Cure | 2026-03-09 → 2026-02-18 (-19d) | 2026-03-16 → 2026-03-03 (-13d) | 6d → 10d |  | resources none → Coffreurs [400%]; Manœuvres [400%] |
| 23 | **Structure du RDC** | 2026-03-17 → 2026-03-04 (-13d) | 2026-04-21 → 2026-04-29 (+8d) | 26d → 41d |  | resources Grutier; Grue → none |
| 24 | **Poteaux** | 2026-03-17 → 2026-03-04 (-13d) | 2026-04-01 → 2026-03-23 (-9d) | 12d → 14d |  |  |
| 25 | Coffrage | 2026-03-17 → 2026-03-04 (-13d) | 2026-03-19 → 2026-03-06 (-13d) |  |  | resources Coffreurs [400%] → Coffreurs [400%]; Manœuvres [400%] |
| 26 | Ferraillage | 2026-03-17 → 2026-03-04 (-13d) | 2026-03-19 → 2026-03-05 (-14d) | 3d → 2d |  | resources Ferrailleurs [400%] → Ferrailleurs [400%]; Manœuvres [200%] |
| 27 | Bétonnage | 2026-03-20 → 2026-03-09 (-11d) | 2026-03-23 → 2026-03-09 (-14d) | 2d → 1d |  | resources Manœuvres [300%]; Maçons [400%]; Grutier → Chef de chantier; Manœuvres [600%]; Maçons [600%] |
| 28 | Décoffrage+cure | 2026-03-24 → 2026-03-10 (-14d) | 2026-04-01 → 2026-03-23 (-9d) | 7d → 10d |  | resources Manœuvres [300%]; Maçons [200%] → Coffreurs [400%]; Manœuvres [400%] |
| 30 | **Poutres+Dalle** | 2026-04-02 → 2026-03-24 (-9d) | 2026-04-21 → 2026-04-29 (+8d) | 14d → 27d |  |  |
| 31 | Coffrage | 2026-04-02 → 2026-03-24 (-9d) | 2026-04-08 → 2026-03-30 (-9d) |  |  | resources Coffreurs [400%] → Coffreurs [400%]; Manœuvres [400%] |
| 32 | Ferraillage | 2026-04-02 → 2026-03-24 (-9d) | 2026-04-08 → 2026-03-26 (-13d) | 5d → 3d |  | resources Ferrailleurs [400%] → Ferrailleurs [400%]; Manœuvres [200%] |
| 33 | Bétonnage | 2026-04-09 → 2026-03-31 (-9d) | 2026-04-10 → 2026-04-01 (-9d) |  |  | resources Maçons [600%]; Manœuvres [300%] → Chef de chantier; Manœuvres [600%]; Maçons [600%] |
| 34 | Décoffrage+cure | 2026-04-13 → 2026-04-02 (-11d) | 2026-04-16 → 2026-04-15 (-1d) | 4d → 10d |  | resources Maçons [300%]; Manœuvres [300%] → Coffreurs [400%]; Manœuvres [400%] |
| 37 | **Structure du 1ere etage** | 2026-04-22 → 2026-04-30 (+8d) | 2026-06-01 → 2026-06-25 (+24d) | 29d → 41d |  | resources Grutier; Grue → none |
| 38 | **Poteaux** | 2026-04-22 → 2026-04-30 (+8d) | 2026-05-07 → 2026-05-19 (+12d) | 12d → 14d |  |  |
| 39 | Coffrage | 2026-04-22 → 2026-04-30 (+8d) | 2026-04-24 → 2026-05-04 (+10d) |  |  | resources Coffreurs [400%] → Coffreurs [400%]; Manœuvres [400%] |
| 40 | Ferraillage | 2026-04-22 → 2026-04-30 (+8d) | 2026-04-24 → 2026-05-01 (+7d) | 3d → 2d |  | resources Ferrailleurs [400%] → Ferrailleurs [400%]; Manœuvres [200%] |
| 41 | Bétonnage | 2026-04-27 → 2026-05-05 (+8d) | 2026-04-28 → 2026-05-05 (+7d) | 2d → 1d |  | resources Manœuvres [300%]; Maçons [400%]; Grutier → Chef de chantier; Manœuvres [600%]; Maçons [600%] |
| 42 | Décoffrage+cure | 2026-04-29 → 2026-05-06 (+7d) | 2026-05-07 → 2026-05-19 (+12d) | 7d → 10d |  | resources Manœuvres [300%]; Maçons [200%] → Coffreurs [400%]; Manœuvres [400%] |
| 44 | **Poutres+Dalle** | 2026-05-08 → 2026-05-20 (+12d) | 2026-05-27 → 2026-06-25 (+29d) | 14d → 27d |  |  |
| 45 | Coffrage | 2026-05-08 → 2026-05-20 (+12d) | 2026-05-14 → 2026-05-26 (+12d) |  |  | resources Coffreurs [400%] → Coffreurs [400%]; Manœuvres [400%] |
| 46 | Ferraillage | 2026-05-08 → 2026-05-20 (+12d) | 2026-05-14 → 2026-05-22 (+8d) | 5d → 3d |  | resources Ferrailleurs [400%] → Ferrailleurs [400%]; Manœuvres [200%] |
| 47 | Bétonnage | 2026-05-15 → 2026-05-27 (+12d) | 2026-05-18 → 2026-05-28 (+10d) |  |  | resources Maçons [600%]; Manœuvres [300%] → Chef de chantier; Manœuvres [600%]; Maçons [600%] |
| 48 | Décoffrage+cure | 2026-05-19 → 2026-05-29 (+10d) | 2026-05-27 → 2026-06-11 (+15d) | 7d → 10d |  | resources Maçons [300%]; Manœuvres [300%] → Coffreurs [400%]; Manœuvres [400%] |
| 52 | **Structure du 2eme etage** | 2026-06-02 → 2026-06-26 (+24d) | 2026-07-10 → 2026-08-21 (+42d) | 29d → 41d |  | resources Grutier; Grue → none |
| 53 | **Poteaux** | 2026-06-02 → 2026-06-26 (+24d) | 2026-06-17 → 2026-07-15 (+28d) | 12d → 14d |  |  |
| 54 | Coffrage | 2026-06-02 → 2026-06-26 (+24d) | 2026-06-04 → 2026-06-30 (+26d) |  |  | resources Coffreurs [400%] → Coffreurs [400%]; Manœuvres [400%] |
| 55 | Ferraillage | 2026-06-02 → 2026-06-26 (+24d) | 2026-06-04 → 2026-06-29 (+25d) | 3d → 2d |  | resources Ferrailleurs [400%] → Ferrailleurs [400%]; Manœuvres [200%] |
| 56 | Bétonnage | 2026-06-05 → 2026-07-01 (+26d) | 2026-06-08 → 2026-07-01 (+23d) | 2d → 1d |  | resources Manœuvres [300%]; Maçons [400%]; Grutier → Chef de chantier; Manœuvres [600%]; Maçons [600%] |
| 57 | Décoffrage+cure | 2026-06-09 → 2026-07-02 (+23d) | 2026-06-17 → 2026-07-15 (+28d) | 7d → 10d |  | resources Manœuvres [300%]; Maçons [200%] → Coffreurs [400%]; Manœuvres [400%] |
| 59 | **Poutres+Dalle** | 2026-06-18 → 2026-07-16 (+28d) | 2026-07-07 → 2026-08-21 (+45d) | 14d → 27d |  |  |
| 60 | Coffrage | 2026-06-18 → 2026-07-16 (+28d) | 2026-06-24 → 2026-07-22 (+28d) |  |  | resources Coffreurs [400%] → Coffreurs [400%]; Manœuvres [400%] |
| 61 | Ferraillage | 2026-06-18 → 2026-07-16 (+28d) | 2026-06-24 → 2026-07-20 (+26d) | 5d → 3d |  | resources Ferrailleurs [400%] → Ferrailleurs [400%]; Manœuvres [200%] |
| 62 | Bétonnage | 2026-06-25 → 2026-07-23 (+28d) | 2026-06-26 → 2026-07-24 (+28d) |  |  | resources Maçons [600%]; Manœuvres [300%] → Chef de chantier; Manœuvres [600%]; Maçons [600%] |
| 63 | Décoffrage+cure | 2026-06-29 → 2026-07-27 (+28d) | 2026-07-07 → 2026-08-07 (+31d) | 7d → 10d |  | resources Maçons [300%]; Manœuvres [300%] → Coffreurs [400%]; Manœuvres [400%] |
| 68 | Murs RDC | 2026-07-08 → 2026-08-24 (+47d) | 2026-07-10 → 2026-08-28 (+49d) | 3d → 5d | 63 → none | was named Cage d’escalier; resources Maçons [200%]; Coffreurs [200%]; Ferrailleurs [300%]; Manœuvres [200%]; Grutier; Grue → Maçons [200%]; Manœuvres [200%]; Chef de chantier |
| 73 | **Fin de chantier** | 2026-07-13 → 2026-08-31 (+49d) | 2026-07-15 → 2026-09-02 (+49d) |  | none → 67 | was named Coffrage; resources Coffreurs [400%] → none |
| 74 | Nettoyage chantier | 2026-10-27 → 2026-08-31 (-57d) | 2026-10-30 → 2026-09-01 (-59d) | 3d → 2d |  | resources Chef de chantier; Manœuvres [300%] → Manœuvres [600%] |
| 75 | Retrait installations | 2026-10-30 → 2026-09-02 (-58d) | 2026-11-03 → 2026-09-02 (-62d) | 2d → 1d |  | resources Chef de chantier; Manœuvres [300%]; Maçons → Chef de chantier; Manœuvres [400%] |
