# Hangar industriel de stockage

How a schedule from ProjectLibre changed from version to version. A marks actual dates.

## Version 1 (saved 2025-12-14)

Note of the change: ODC, Page de garde

| ID | WBS | Task | Duration | Start | Finish | Predecessors | Complete |
| --- | --- | --- | --- | --- | --- | --- | --- |
| 1 | 1 | **Implantation du chantier** | 5d | 2025-12-15 | 2025-12-19 |  | 100% |
| 2 |  | Implantation, nivaux | 1d | 2025-12-15 | 2025-12-15 |  | 100% |
| 3 |  | Piquetage fondations | 1d | 2025-12-16 | 2025-12-16 | 2 | 100% |
| 4 |  | Baraque chantier | 1d | 2025-12-17 | 2025-12-17 | 3 | 100% |
| 5 |  | Stockage matériaux | 1d | 2025-12-18 | 2025-12-18 | 4 | 100% |
| 6 |  | Signalisation et sécurité | 1d | 2025-12-19 | 2025-12-19 | 5 | 100% |
| 8 | 2 | **TERRASSEMENT** | 6d | 2025-12-22 | 2025-12-29 | 1 | 100% |
| 9 |  | Décapage terrain | 2d | 2025-12-22 | 2025-12-23 |  | 100% |
| 10 |  | Fouilles pour semelle isolees | 3d | 2025-12-24 | 2025-12-26 | 9 | 100% |
| 11 |  | Evacuations des debris | 1d | 2025-12-29 | 2025-12-29 | 10 | 100% |
| 13 | 3 | **Fondation en BA** | 18d | 2025-12-30 | 2026-01-22 | 8 | 100% |
| 14 |  | Béton de propreté | 2d | 2025-12-30 | 2025-12-31 |  | 100% |
| 15 |  | Coffrage semelles | 4d | 2026-01-01 | 2026-01-06 | 14 | 100% |
| 16 |  | Ferraillage semelles | 4d | 2025-12-30 | 2026-01-02 |  | 100% |
| 17 |  | Pose des tiges d’ancrage | 2d | 2026-01-07 | 2026-01-08 | 15, 16 | 100% |
| 18 |  | Bétonnage semelles | 2d | 2026-01-09 | 2026-01-12 | 17 | 100% |
| 19 |  | Cure et decoffrage | 8d | 2026-01-13 | 2026-01-22 | 18 | 100% |
| 21 | 4 | **Fabrication des Profilees** | 17d | 2025-12-30 | 2026-01-21 | 8 | 100% |
| 22 |  | Coupe profilés | 4d | 2025-12-30 | 2026-01-02 |  | 100% |
| 23 |  | Soudure éléments | 6d | 2026-01-05 | 2026-01-12 | 22 | 100% |
| 24 |  | Perçage pour boulonnage | 3d | 2026-01-13 | 2026-01-15 | 23 | 100% |
| 25 |  | Protection anticorrosion | 4d | 2026-01-16 | 2026-01-21 | 24 | 100% |
| 27 | 5 | **TRANSPORT & STOCKAGE** | 2d | 2026-01-22 | 2026-01-23 | 21 | 100% |
| 28 |  | Transport éléments charpente | 2d | 2026-01-22 | 2026-01-23 | 25 | 100% |
| 30 | 6 | **MONTAGE CHARPENTE** | 20d | 2026-01-26 | 2026-02-20 | 13, 27 | 100% |
| 31 |  | Pose poteaux | 5d | 2026-01-26 | 2026-01-30 |  | 100% |
| 32 |  | Pose poutres | 5d | 2026-02-02 | 2026-02-06 | 31 | 100% |
| 33 |  | Pose pannes et contreventements | 6d | 2026-02-09 | 2026-02-16 | 32 | 100% |
| 34 |  | Soudure de réglage et reparation | 2d | 2026-02-17 | 2026-02-18 | 33 | 100% |
| 35 |  | Serrage final et contrôle | 2d | 2026-02-19 | 2026-02-20 | 34 | 100% |
| 37 | 7 | **CLOISONS EXTÉRIEURES et isolations** | 11d | 2026-02-23 | 2026-03-09 | 30 | 100% |
| 38 |  | Pose ossature secondaire | 3d | 2026-02-23 | 2026-02-25 |  | 100% |
| 39 |  | Pose panneaux sandwich | 5d | 2026-02-26 | 2026-03-04 | 38 | 100% |
| 40 |  | Étanchéité et joints | 3d | 2026-03-05 | 2026-03-09 | 39 | 100% |
| 42 | 8 | **CONTRÔLE FINAL et reception** | 4d | 2026-03-10 | 2026-03-13 | 37 | 100% |
| 43 |  | Vérification boulonnage | 2d | 2026-03-10 | 2026-03-11 |  | 100% |
| 44 |  | Vérification alignement | 2d | 2026-03-10 | 2026-03-11 |  | 100% |
| 45 |  | Nettoyage chantier | 2d | 2026-03-12 | 2026-03-13 | 44, 43 | 100% |

## Version 2 (saved 2025-12-15)

Note of the change: suite odc

Last finish stays 2026-03-13. Complete tasks 30 → 0.

Changed:

| ID | Task | Complete |
| --- | --- | --- |
| 1 | **Implantation du chantier** | 100% → 0% |
| 2 | Implantation, nivaux | 100% → 0% |
| 3 | Piquetage fondations | 100% → 0% |
| 4 | Baraque chantier | 100% → 0% |
| 5 | Stockage matériaux | 100% → 0% |
| 6 | Signalisation et sécurité | 100% → 0% |
| 8 | **TERRASSEMENT** | 100% → 0% |
| 9 | Décapage terrain | 100% → 0% |
| 10 | Fouilles pour semelle isolees | 100% → 0% |
| 11 | Evacuations des debris | 100% → 0% |
| 13 | **Fondation en BA** | 100% → 0% |
| 14 | Béton de propreté | 100% → 0% |
| 15 | Coffrage semelles | 100% → 0% |
| 16 | Ferraillage semelles | 100% → 0% |
| 17 | Pose des tiges d’ancrage | 100% → 0% |
| 18 | Bétonnage semelles | 100% → 0% |
| 19 | Cure et decoffrage | 100% → 0% |
| 21 | **Fabrication des Profilees** | 100% → 0% |
| 22 | Coupe profilés | 100% → 0% |
| 23 | Soudure éléments | 100% → 0% |
| 24 | Perçage pour boulonnage | 100% → 0% |
| 25 | Protection anticorrosion | 100% → 0% |
| 27 | **TRANSPORT & STOCKAGE** | 100% → 0% |
| 28 | Transport éléments charpente | 100% → 0% |
| 30 | **MONTAGE CHARPENTE** | 100% → 0% |
| 31 | Pose poteaux | 100% → 0% |
| 32 | Pose poutres | 100% → 0% |
| 33 | Pose pannes et contreventements | 100% → 0% |
| 34 | Soudure de réglage et reparation | 100% → 0% |
| 35 | Serrage final et contrôle | 100% → 0% |
| 37 | **CLOISONS EXTÉRIEURES et isolations** | 100% → 0% |
| 38 | Pose ossature secondaire | 100% → 0% |
| 39 | Pose panneaux sandwich | 100% → 0% |
| 40 | Étanchéité et joints | 100% → 0% |
| 42 | **CONTRÔLE FINAL et reception** | 100% → 0% |
| 43 | Vérification boulonnage | 100% → 0% |
| 44 | Vérification alignement | 100% → 0% |
| 45 | Nettoyage chantier | 100% → 0% |
